# Bouwplanning v1.0

Schedule from an IFC model.
Villa Nieuwbouw Wassenaar

## Schedule

| ID | Activity | Predecessors |
| --- | --- | --- |
| 1 | **1. Voorbereiding** |  |
| 1.1 | Bouwplaats inrichten |  |
| 1.2 | Bomen beschermen | 1.1 |
| 1.3 | Start bouw | 1.2 |
| 2 | **2. Grondwerk & Fundering** |  |
| 2.1 | Ontgraven zwembad | 1.3 |
| 2.2 | Funderingssleuven graven | 2.1 |
| 2.3 | Fundering storten | 2.2 |
| 2.4 | Riolering en drainage | 2.3 |
| 2.5 | Kruipruimte opvullen | 2.4 |
| 2.6 | Begane grondvloer | 2.5 |
| 3 | **3. Ruwbouw** |  |
| 3.1 | Begane grond metselwerk | 2.6 |
| 3.2 | Verdiepingsvloer storten | 3.1 |
| 3.3 | Verdieping metselwerk | 3.2 |
| 3.4 | Dakconstructie hout | 3.3 |
| 3.5 | Dakpannen | 3.4 |
| 3.6 | Schoorstenen metsen | 3.5 |
| 3.7 | Hoogste punt | 3.6 |
| 4 | **4. Gevel & Dak** |  |
| 4.1 | Gevelisolatie | 3.7 |
| 4.2 | Kozijnen hardhouten | 4.1 |
| 4.3 | Beglazing HR+++ | 4.2 |
| 4.4 | Zinken goten en HWA | 4.3 |
| 4.5 | Wind- en waterdicht | 4.4 |

| ID | Activity | Predecessors |
| --- | --- | --- |
| 5 | **5. Installaties** |  |
| 5.1 | Elektra eerste fix | 4.5 |
| 5.2 | Loodgieter eerste fix | 5.1 SS |
| 5.3 | Vloerverwarming | 5.2 |
| 5.4 | Domotica systeem | 5.3 |
| 5.5 | Zwembadtechniek | 5.4 |
| 5.6 | Warmtepomp en bodem | 5.5 |
| 5.7 | Zonnepanelen | 5.6 |
| 6 | **6. Afbouw** |  |
| 6.1 | Stucwerk wanden en plafonds | 5.7 |
| 6.2 | Tegelwerk badkamers luxe | 6.1 |
| 6.3 | Natuurstenen vloeren | 6.2 |
| 6.4 | Eiken trappen | 6.3 |
| 6.5 | Maatwerk keuken | 6.4 |
| 6.6 | Schilderwerk | 6.5 |
| 6.7 | Sanitair afmonteren | 6.6 |
| 7 | **7. Buitenwerk & Oplevering** |  |
| 7.1 | Zwembad afbouwen | 6.7 |
| 7.2 | Tuinaanleg | 7.1 |
| 7.3 | Oprit en bestrating | 7.2 |
| 7.4 | Schoonmaak | 7.3 |
| 7.5 | Oplevering | 7.4 |
